# WBS ENZO Y ALEXIS

Schedule from MS Project, 2013-04-03 to 2013-06-29.

## Calendars

- Estándar: Mon-Tue off; Wed 14:00-22:00; Thu-Fri off; Sat 08:00-12:00, 13:00-17:00; Sun off.

## Resources

| Resource |
| --- |
| Analista Funcional I |
| Programador I |
| Programador II |
| Analista Funcional II |
| Adm. de Proyecto |

## Schedule

| ID | WBS | Task | Duration | Start | Finish | Predecessors | Total slack | Free slack | Resources | Work |
| --- | --- | --- | --- | --- | --- | --- | --- | --- | --- | --- |
| 1 | 1 | **Proyecto: S.A.P.O.** | 25.75d | 2013-04-03 | 2013-06-29 |  | 0d |  |  | 8h |
| 2 | 1.1 | **Gestión de Proyecto** | 15d | 2013-04-03 | 2013-05-22 |  | 10.75d |  |  | 8h |
| 3 | 1.1.1 | **Alcance** | 15d | 2013-04-03 | 2013-05-22 |  | 10.75d |  |  | 8h |
| 4 | 1.1.1.1 | **Desarrollo idea de Proyecto** | 6.25d | 2013-04-03 | 2013-04-24 |  | 19.5d |  |  | 8h |
| 5 | 1.1.1.1.1 | Definir objetivos | 4h | 2013-04-03 | 2013-04-03 |  | 19.5d | 0d | Adm. de Proyecto; Analista Funcional I | 8h |
| 6 | 1.1.1.1.2 | Definir ámbito | 16h | 2013-04-03 | 2013-04-10 | 5 | 19.5d | 0d |  |  |
| 7 | 1.1.1.1.3 | Analizar y definir solución | 30h | 2013-04-10 | 2013-04-24 | 6 | 19.5d |  |  |  |
| 8 | 1.1.1.2 | **Definición alcance de proyecto** | 1.75d | 2013-04-03 | 2013-04-06 |  | 24d |  |  |  |
| 9 | 1.1.1.2.1 | Identificar supuestos y restricciones | 4h | 2013-04-03 | 2013-04-03 |  | 24.75d | 0.75d |  |  |
| 10 | 1.1.1.2.2 | Identificar entregables de trabajo | 10h | 2013-04-03 | 2013-04-06 |  | 24d | 0d |  |  |
| 11 | 1.1.1.2.3 | Definir roles participantes | 4h | 2013-04-03 | 2013-04-03 |  | 24.75d | 0.75d |  |  |
| 12 | 1.1.1.2.4 | Elaborar Project Charter | 4h | 2013-04-06 | 2013-04-06 | 9, 10, 11 | 24d |  |  |  |
| 13 | 1.1.1.2.5 | Elaborar Scope Statement | 4h | 2013-04-06 | 2013-04-06 | 9, 10, 11 | 24d |  |  |  |
| 14 | 1.1.1.3 | **Desglose de trabajo (WBS)** | 15d | 2013-04-03 | 2013-05-22 |  | 10.75d |  |  |  |
| 15 | 1.1.1.3.1 | Identificar componentes y estructurar la WBS | 50h | 2013-04-03 | 2013-04-24 |  | 10.75d | 0d |  |  |
| 16 | 1.1.1.3.2 | Elaborar diccionario de la WBS | 60h | 2013-04-24 | 2013-05-18 | 15 | 10.75d | 0d |  |  |
| 17 | 1.1.1.3.3 | Realizar listado de actividades | 10h | 2013-05-18 | 2013-05-22 | 16 | 10.75d |  |  |  |
| 18 | 1.1.1.4 | **Planificar Iteraciones del proyecto** | 5d | 2013-04-03 | 2013-04-17 |  | 20.75d |  |  |  |
| 19 | 1.1.1.4.1 | Armar lista priorizada de requerimientos con el cliente | 10h | 2013-04-03 | 2013-04-06 |  | 20.75d | 0d |  |  |
| 20 | 1.1.1.4.2 | Definir requerimientos a incluir en cada iteración | 15h | 2013-04-06 | 2013-04-13 | 19 | 20.75d | 0d |  |  |
| 21 | 1.1.1.4.3 | Asignar recursos para cada iteración | 10h | 2013-04-13 | 2013-04-17 | 20 | 20.75d | 0d |  |  |
| 22 | 1.1.1.4.4 | Documentar planificación de las iteraciones | 5h | 2013-04-17 | 2013-04-17 | 21 | 20.75d |  |  |  |
| 23 | 1.1.2 | **Tiempo** | 3.75d | 2013-04-03 | 2013-04-13 |  | 22d |  |  |  |
| 24 | 1.1.2.1 | **Estimación de recursos y duración actividades** | 2d | 2013-04-03 | 2013-04-06 |  | 23.75d |  |  |  |
| 25 | 1.1.2.1.1 | Estimar duración actividades | 10h | 2013-04-03 | 2013-04-06 |  | 23.75d | 0d |  |  |
| 26 | 1.1.2.1.2 | Estimar recursos necesarios | 5h | 2013-04-03 | 2013-04-03 |  | 24.38d | 0.62d |  |  |
| 27 | 1.1.2.1.3 | Análisis de estimaciones | 6h | 2013-04-06 | 2013-04-06 | 26, 25 | 23.75d |  |  |  |

| ID | WBS | Task | Duration | Start | Finish | Predecessors | Total slack | Free slack |
| --- | --- | --- | --- | --- | --- | --- | --- | --- |
| 28 | 1.1.2.2 | **Desarrollo del Cronograma** | 3.75d | 2013-04-03 | 2013-04-13 |  | 22d |  |
| 29 | 1.1.2.2.1 | Identificar hitos del proyecto | 4h | 2013-04-03 | 2013-04-03 |  | 24d | 2d |
| 30 | 1.1.2.2.2 | Identificar actividades críticas | 10h | 2013-04-03 | 2013-04-06 |  | 22d | 0d |
| 31 | 1.1.2.2.3 | Analizar secuenciamiento de actividades | 10h | 2013-04-06 | 2013-04-10 | 30 | 22d | 0d |
| 32 | 1.1.2.2.4 | Definir cronograma | 10h | 2013-04-10 | 2013-04-13 | 29, 31 | 22d |  |
| 33 | 1.1.2.3 | **Control del Cronograma** | 3d | 2013-04-03 | 2013-04-10 |  | 22.75d |  |
| 34 | 1.1.2.3.1 | Determinar estado actual | 10h | 2013-04-03 | 2013-04-06 |  | 22.75d | 0d |
| 35 | 1.1.2.3.2 | Analizar factores que generan cambios | 10h | 2013-04-06 | 2013-04-10 | 34 | 22.75d | 0d |
| 36 | 1.1.2.3.3 | Gestionar cambios en el cronograma | 4h | 2013-04-10 | 2013-04-10 | 35 | 22.75d |  |
| 37 | 1.1.3 | **Riesgos** | 3.75d | 2013-04-03 | 2013-04-13 |  | 22d |  |
| 38 | 1.1.3.1 | **Planificación de la gestión de riesgos** | 1.88d | 2013-04-03 | 2013-04-06 |  | 23.88d |  |
| 39 | 1.1.3.1.1 | Definir metodologías | 5h | 2013-04-03 | 2013-04-03 |  | 25.12d |  |
| 40 | 1.1.3.1.2 | Definir roles y responsabilidades | 10h | 2013-04-03 | 2013-04-06 |  | 23.88d | 0d |
| 41 | 1.1.3.1.3 | Asignar recursos | 5h | 2013-04-06 | 2013-04-06 | 40 | 23.88d |  |
| 42 | 1.1.3.1.4 | Establecer frecuencia de supervisión y control | 2h | 2013-04-03 | 2013-04-03 |  | 25.5d |  |
| 43 | 1.1.3.2 | **Identificación y análisis de riesgos** | 3.75d | 2013-04-03 | 2013-04-13 |  | 22d |  |
| 44 | 1.1.3.2.1 | Listar riesgos del proyecto | 10h | 2013-04-03 | 2013-04-06 |  | 22d | 0d |
| 45 | 1.1.3.2.2 | Analizar probabilidad e impacto de los riesgos | 15h | 2013-04-06 | 2013-04-13 | 44 | 22d | 0d |
| 46 | 1.1.3.2.3 | Elaborar matriz de probabilidad e impacto | 5h | 2013-04-13 | 2013-04-13 | 45 | 22d |  |
| 47 | 1.1.3.3 | **Selección de riesgos y planes de respuesta** | 2.12d | 2013-04-03 | 2013-04-10 |  | 23.62d |  |
| 48 | 1.1.3.3.1 | Elegir criterio de selección | 2h | 2013-04-03 | 2013-04-03 |  | 23.62d | 0d |
| 49 | 1.1.3.3.2 | Seleccionar riesgos a contemplar | 5h | 2013-04-03 | 2013-04-03 | 48 | 23.62d | 0d |
| 50 | 1.1.3.3.3 | Definir estrategia de respuesta | 2h | 2013-04-03 | 2013-04-06 | 49 | 23.62d | 0d |
| 51 | 1.1.3.3.4 | Planificar estrategias | 5h | 2013-04-06 | 2013-04-06 | 50 | 23.62d | 0d |
| 52 | 1.1.3.3.5 | Documentar resultados | 3h | 2013-04-06 | 2013-04-10 | 51 | 23.62d |  |

| ID | WBS | Task | Duration | Start | Finish | Predecessors | Total slack | Free slack |
| --- | --- | --- | --- | --- | --- | --- | --- | --- |
| 53 | 1.1.3.4 | **Supervisión y control** | 2.5d | 2013-04-03 | 2013-04-10 |  | 23.25d |  |
| 54 | 1.1.3.4.1 | Supervisar y reevaluar los riesgos | 15h | 2013-04-03 | 2013-04-06 |  | 23.25d | 0d |
| 55 | 1.1.3.4.2 | Identificar nuevos riesgos | 15h | 2013-04-03 | 2013-04-06 |  | 23.25d | 0d |
| 56 | 1.1.3.4.3 | Documentar cambios en el plan | 5h | 2013-04-06 | 2013-04-10 | 54, 55 | 23.25d |  |
| 57 | 1.1.4 | **Gestión de recursos humanos** | 11.25d | 2013-04-03 | 2013-05-11 |  | 14.5d |  |
| 58 | 1.1.4.1 | **Planificación** | 0.62d | 2013-04-03 | 2013-04-03 |  | 25.12d |  |
| 59 | 1.1.4.1.1 | Definir roles y responsabilidades | 5h | 2013-04-03 | 2013-04-03 |  | 25.12d |  |
| 60 | 1.1.4.1.2 | Definir calendario de recursos | 5h | 2013-04-03 | 2013-04-03 |  | 25.12d |  |
| 61 | 1.1.4.1.3 | Elaborar plantillas de documentación | 5h | 2013-04-03 | 2013-04-03 |  | 25.12d |  |
| 62 | 1.1.4.2 | **Gestión de reuniones** | 11.25d | 2013-04-03 | 2013-05-11 |  | 14.5d |  |
| 63 | 1.1.4.2.1 | Definir cheklist de temas a tratar | 20h | 2013-04-03 | 2013-04-10 |  | 14.5d | 0d |
| 64 | 1.1.4.2.2 | Establecer lugar, fecha y hora | 5h | 2013-04-03 | 2013-04-03 |  | 16.38d | 1.88d |
| 65 | 1.1.4.2.3 | Concretar reunión | 50h | 2013-04-10 | 2013-05-01 | 63, 64 | 14.5d | 0d |
| 66 | 1.1.4.2.4 | Completar minuta de reunión semanal | 20h | 2013-05-01 | 2013-05-11 | 65 | 14.5d |  |
| 67 | 1.2 | **Producto** | 25.75d | 2013-04-03 | 2013-06-29 |  | 0d |  |
| 68 | 1.2.1 | **Relevamiento** | 25.75d | 2013-04-03 | 2013-06-29 |  | 0d |  |
| 69 | 1.2.1.1 | **Diseñar instrumento de relevamiento** | 13.12d | 2013-04-03 | 2013-05-18 |  | 12.62d |  |
| 70 | 1.2.1.1.1 | Definir ámbito de relevamiento | 10h | 2013-04-03 | 2013-04-06 |  | 23.25d | 1.25d |
| 71 | 1.2.1.1.2 | Seleccionar la herramienta de relevamiento apropiada | 20h | 2013-04-03 | 2013-04-10 |  | 12.62d | 0d |
| 72 | 1.2.1.1.3 | Seleccionar el medio de relevamiento | 10h | 2013-04-10 | 2013-04-13 | 70, 71 | 22d |  |
| 73 | 1.2.1.1.4 | Elaborar listado de preguntas tentativas | 25h | 2013-04-10 | 2013-04-20 | 71 | 12.62d | 0d |
| 74 | 1.2.1.1.5 | Seleccionar las preguntas a realizar | 20h | 2013-04-20 | 2013-05-01 | 73 | 12.62d | 0d |
| 75 | 1.2.1.1.6 | Diseñar y confeccionar la herramienta | 30h | 2013-05-01 | 2013-05-11 | 74 | 12.62d | 0d |
| 76 | 1.2.1.1.7 | Estimar cantidad de formularios y emitir los mismos | 10h | 2013-05-11 | 2013-05-18 | 75 | 12.62d |  |

| ID | WBS | Task | Duration | Start | Finish | Predecessors | Total slack | Free slack |
| --- | --- | --- | --- | --- | --- | --- | --- | --- |
| 77 | 1.2.1.2 | **Relevar información** | 7.5d | 2013-04-03 | 2013-04-27 |  | 18.25d |  |
| 78 | 1.2.1.2.1 | Analizar el medio de relevamiento | 5h | 2013-04-03 | 2013-04-03 |  | 18.25d | 0d |
| 79 | 1.2.1.2.2 | Determinar fecha y hora de relevamiento. En caso de ser necesario, concertar cita con stakeholder | 10h | 2013-04-03 | 2013-04-06 | 78 | 18.25d | 0d |
| 80 | 1.2.1.2.3 | Preparar el relevamiento | 10h | 2013-04-06 | 2013-04-13 | 79 | 18.25d | 0d |
| 81 | 1.2.1.2.4 | Realizar relevamiento mediante la herramienta | 30h | 2013-04-13 | 2013-04-24 | 80 | 18.25d | 0d |
| 82 | 1.2.1.2.5 | Concluir el relevamiento realizado | 5h | 2013-04-24 | 2013-04-27 | 81 | 18.25d |  |
| 83 | 1.2.1.3 | **Analizar Información** | 6.88d | 2013-04-03 | 2013-04-24 |  | 18.88d |  |
| 84 | 1.2.1.3.1 | Organizar información recabada de acuerdo a criterios que simplifiquen su análisis | 5h | 2013-04-03 | 2013-04-03 |  | 18.88d | 0d |
| 85 | 1.2.1.3.2 | Analizar la información | 10h | 2013-04-03 | 2013-04-06 | 84 | 18.88d | 0d |
| 86 | 1.2.1.3.3 | Debatir grupalmente los resultados del análisis para comprender el funcionamiento de la organización | 20h | 2013-04-06 | 2013-04-17 | 85 | 18.88d | 0d |
| 87 | 1.2.1.3.4 | Elaborar conclusión de relevamiento destacando nuevos puntos a investigar | 20h | 2013-04-17 | 2013-04-24 | 86 | 18.88d |  |
| 88 | 1.2.1.4 | **Documentar el proceso de negocio** | 25.75d | 2013-04-03 | 2013-06-29 |  | 0d |  |
| 89 | 1.2.1.4.1 | Identificar y discutir grupalmente los diferentes procesos de negocio presentes en la organización | 5h | 2013-04-03 | 2013-04-03 |  | 0d |  |
| 90 | 1.2.1.4.2 | Seleccionar los procesos que serán afectados por el sistema de información | 6h | 2013-04-03 | 2013-04-06 | 89 | 0d |  |
| 91 | 1.2.1.4.3 | Confeccionar mapa global de los procesos de entorno | 10h | 2013-04-06 | 2013-04-10 | 90 | 23.12d |  |
| 92 | 1.2.1.4.4 | Describir los procesos identificados a los que da soporte el sistema de información | 20h | 2013-04-06 | 2013-04-13 | 90 | 0d |  |
| 93 | 1.2.1.4.5 | Identificar los problemas de los procesos actuales | 10h | 2013-04-13 | 2013-04-20 | 92 | 0d |  |
| 94 | 1.2.1.4.6 | Establecer puntos de mejora | 5h | 2013-04-20 | 2013-04-20 | 93, 92 | 0d |  |
| 95 | 1.2.1.4.7 | Desarrollar una propuesta de mejora que contemple los problemas y los puntos de mejora identificados | 20d | 2013-04-20 | 2013-06-29 | 94 | 0d |  |
| 96 | 1.2.1.5 | **Aceptación del Cliente** | 1.38d | 2013-04-03 | 2013-04-06 |  | 24.38d |  |
| 97 | 1.2.1.5.1 | Enviar la documentación del proceso de negocio al cliente | 1h | 2013-04-03 | 2013-04-03 |  | 24.38d | 0d |
| 98 | 1.2.1.5.2 | Evaluar retroalimentación del cliente | 4h | 2013-04-03 | 2013-04-03 | 97 | 24.38d | 0d |
| 99 | 1.2.1.5.3 | Actualizar documentación | 2h | 2013-04-03 | 2013-04-03 | 98 | 24.38d | 0d |
| 100 | 1.2.1.5.4 | Registrar aprobacion del cliente | 0.5d | 2013-04-03 | 2013-04-06 | 99 | 24.38d |  |

| ID | WBS | Task | Duration | Start | Finish | Predecessors | Total slack | Free slack |
| --- | --- | --- | --- | --- | --- | --- | --- | --- |
| 101 | 1.2.2 | **Requerimiento** | 22d | 2013-04-03 | 2013-06-15 |  | 3.75d |  |
| 102 | 1.2.2.1 | **Especificar requerimientos del sistema** | 5.62d | 2013-04-03 | 2013-04-20 |  | 20.12d |  |
| 103 | 1.2.2.1.1 | Identificar requerimientos globales de la organización | 5h | 2013-04-03 | 2013-04-03 |  | 20.12d | 0d |
| 104 | 1.2.2.1.2 | Identificar requerimientos detallados de la organización | 20h | 2013-04-03 | 2013-04-13 | 103 | 20.12d | 0d |
| 105 | 1.2.2.1.3 | Realizar descripción de requerimientos funcionales | 20h | 2013-04-13 | 2013-04-20 | 104 | 20.12d |  |
| 106 | 1.2.2.1.4 | Realizar descripción de requerimientos no funcionales | 10h | 2013-04-13 | 2013-04-17 | 104 | 21.38d |  |
| 107 | 1.2.2.2 | **Estructurar modelo de casos de uso del sistema** | 22d | 2013-04-03 | 2013-06-15 |  | 3.75d |  |
| 108 | 1.2.2.2.1 | Identificar y describir actores | 4h | 2013-04-03 | 2013-04-03 |  | 3.75d | 0d |
| 109 | 1.2.2.2.2 | Identificar relaciones entre los actores | 2h | 2013-04-03 | 2013-04-03 | 108 | 3.75d | 0d |
| 110 | 1.2.2.2.3 | Identificar Casos de Uso del sistema | 30h | 2013-04-03 | 2013-04-17 | 109 | 3.75d | 0d |
| 111 | 1.2.2.2.4 | Describir objetivos de casos de uso del sistema | 40h | 2013-04-17 | 2013-05-04 | 110 | 3.75d | 0d |
| 112 | 1.2.2.2.5 | Describir trazo grueso de casos de uso del sistema | 7h | 2013-04-17 | 2013-04-20 | 110 | 17.88d | 0d |
| 113 | 1.2.2.2.6 | Describir trazo fino de CU esenciales del sistema | 50h | 2013-04-17 | 2013-05-08 | 110 | 15d |  |
| 114 | 1.2.2.2.7 | Identificar relaciones entre casos de uso | 100h | 2013-05-04 | 2013-06-15 | 111 | 3.75d |  |
| 115 | 1.2.2.2.8 | Construir diagramas de caso de uso del sistema | 10h | 2013-04-20 | 2013-04-24 | 112 | 17.88d | 0d |
| 116 | 1.2.2.2.9 | Confeccionar documento de especificación de requerimiento del software | 10h | 2013-04-24 | 2013-04-27 | 115 | 17.88d |  |
| 117 | 1.2.2.3 | **Realizar modelo de objetos del dominio del problema(MODP)** | 8.75d | 2013-04-03 | 2013-05-01 |  | 17d |  |
| 118 | 1.2.2.3.1 | Identificar clases del dominio | 15h | 2013-04-03 | 2013-04-06 |  | 17d | 0d |
| 119 | 1.2.2.3.2 | Identificar atributos y métodos de clase | 30h | 2013-04-06 | 2013-04-20 | 118 | 17d | 0d |
| 120 | 1.2.2.3.3 | Identificar relaciones entre clases | 10h | 2013-04-20 | 2013-04-24 | 119 | 17d | 0d |
| 121 | 1.2.2.3.4 | Confecionar el diagrama de clases | 15h | 2013-04-24 | 2013-05-01 | 120 | 17d |  |
| 122 | 1.2.2.4 | **Construir prototipo de interfaz** | 6d | 2013-04-03 | 2013-04-20 |  | 19.75d |  |
| 123 | 1.2.2.4.1 | Definir un template para la interfaz y prototipos de interfaz | 15h | 2013-04-03 | 2013-04-06 |  | 19.75d | 0d |
| 124 | 1.2.2.4.2 | Identificar los casos de uso del sistema que requieren prototipos de interfaz | 2h | 2013-04-06 | 2013-04-10 | 123 | 19.75d | 0d |
| 125 | 1.2.2.4.3 | Definir los datos necesarios para cada interfaz | 6h | 2013-04-10 | 2013-04-10 | 124 | 19.75d | 0d |
| 126 | 1.2.2.4.4 | Diseñar interfaces de cada caso de uso identificado | 20h | 2013-04-10 | 2013-04-20 | 125 | 19.75d | 0d |
| 127 | 1.2.2.4.5 | Definir y diseñar navegabilidad de las interfaces | 3h | 2013-04-20 | 2013-04-20 | 126 | 19.75d | 0d |
| 128 | 1.2.2.4.6 | Recorrer el flujo de trabajo de cada caso de uso mediante las interfaces | 2h | 2013-04-20 | 2013-04-20 | 127 | 19.75d |  |

| ID | WBS | Task | Duration | Start | Finish | Predecessors | Total slack | Free slack |
| --- | --- | --- | --- | --- | --- | --- | --- | --- |
| 129 | 1.2.2.5 | **Validación del Cliente** | 4.75d | 2013-04-03 | 2013-04-17 |  | 21d |  |
| 130 | 1.2.2.5.1 | Organizar reunión con el cliente | 6h | 2013-04-03 | 2013-04-03 |  | 21d | 0d |
| 131 | 1.2.2.5.2 | Presentar casos de uso identificados y evaluar su validez | 20h | 2013-04-03 | 2013-04-13 | 130 | 21d | 0d |
| 132 | 1.2.2.5.3 | Validar CU esenciales recorriendo los diferentes escenarios mediante las interfaces gráficas | 10h | 2013-04-13 | 2013-04-17 | 131 | 21d | 0d |
| 133 | 1.2.2.5.4 | Registrar aportes y modificaciones hechas por el cliente | 2h | 2013-04-17 | 2013-04-17 | 132 | 21d |  |
| 134 | 1.2.3 | **Análisis** | 1d | 2013-04-03 | 2013-04-03 |  | 24.75d |  |
| 135 | 1.2.3.1 | **Realización de casos de uso esenciales** | 1d | 2013-04-03 | 2013-04-03 |  | 24.75d |  |
| 136 | 1.2.3.1.1 | Identificar clases de análisis participantes | 1d | 2013-04-03 | 2013-04-03 |  | 24.75d |  |
| 137 | 1.2.3.1.2 | Describir interacciones entre objetos de análisis | 1d | 2013-04-03 | 2013-04-03 |  | 24.75d |  |
| 138 | 1.2.3.1.3 | Documentar requisitos especiales | 1d | 2013-04-03 | 2013-04-03 |  | 24.75d |  |
| 139 | 1.2.3.1.4 | Estructurar diagrama de clases de analisis | 1d | 2013-04-03 | 2013-04-03 |  | 24.75d |  |
| 140 | 1.2.3.2 | **Estructurar artefactos de análisis en paquetes de análisis** | 1d | 2013-04-03 | 2013-04-03 |  | 24.75d |  |
| 141 | 1.2.3.2.1 | Identificar clases con alta cohesión | 1d | 2013-04-03 | 2013-04-03 |  | 24.75d |  |
| 142 | 1.2.3.2.2 | Estructurar las clases en paquetes de análisis | 1d | 2013-04-03 | 2013-04-03 |  | 24.75d |  |
| 143 | 1.2.3.2.3 | Identificar relaciones entre paquetes de análisis | 1d | 2013-04-03 | 2013-04-03 |  | 24.75d |  |
| 144 | 1.2.3.2.4 | Verificar los paquetes buscando alta cohesión entre sus componentes y bajo acoplamiento con otros paquetes | 1d | 2013-04-03 | 2013-04-03 |  | 24.75d |  |
| 145 | 1.2.4 | **Diseño** | 1d | 2013-04-03 | 2013-04-03 |  | 24.75d |  |
| 146 | 1.2.4.1 | **Diseñar la arquitectura** | 1d | 2013-04-03 | 2013-04-03 |  | 24.75d |  |
| 147 | 1.2.4.1.1 | Clasificar los Requisitos No Funcionales | 1d | 2013-04-03 | 2013-04-03 |  | 24.75d |  |
| 148 | 1.2.4.1.2 | Construir vista de despliegue de nodos | 1d | 2013-04-03 | 2013-04-03 |  | 24.75d |  |
| 149 | 1.2.4.1.3 | Construir vista de despliegue de hardware | 1d | 2013-04-03 | 2013-04-03 |  | 24.75d |  |
| 150 | 1.2.4.1.4 | Contruir vista de subsistemas e interfaces | 1d | 2013-04-03 | 2013-04-03 |  | 24.75d |  |
| 151 | 1.2.4.1.5 | Identificar Patrones de arquitectura a aplicar | 1d | 2013-04-03 | 2013-04-03 |  | 24.75d |  |
| 152 | 1.2.4.2 | **Realización de caso de uso - diseño (Solo los CU esenciales)** | 1d | 2013-04-03 | 2013-04-03 |  | 24.75d |  |
| 153 | 1.2.4.2.1 | Identificar clases de diseño participantes | 1d | 2013-04-03 | 2013-04-03 |  | 24.75d |  |
| 154 | 1.2.4.2.2 | Aplicar Patrones de Diseño | 1d | 2013-04-03 | 2013-04-03 |  | 24.75d |  |
| 155 | 1.2.4.2.3 | Describir interacciones entre objetos de diseño | 1d | 2013-04-03 | 2013-04-03 |  | 24.75d |  |
| 156 | 1.2.4.2.4 | Estructurar diagrama de clases de diseño | 1d | 2013-04-03 | 2013-04-03 |  | 24.75d |  |

| ID | WBS | Task | Duration | Start | Finish | Total slack |
| --- | --- | --- | --- | --- | --- | --- |
| 157 | 1.2.4.3 | **Realizar Diagrama de Transición de estados** | 1d | 2013-04-03 | 2013-04-03 | 24.75d |
| 158 | 1.2.4.3.1 | Identificar Clases con transición de estados | 1d | 2013-04-03 | 2013-04-03 | 24.75d |
| 159 | 1.2.4.3.2 | Identificar estados de las clases | 1d | 2013-04-03 | 2013-04-03 | 24.75d |
| 160 | 1.2.4.3.3 | Identificar transiciones | 1d | 2013-04-03 | 2013-04-03 | 24.75d |
| 161 | 1.2.4.3.4 | Realizar diagrama de transición de estados | 1d | 2013-04-03 | 2013-04-03 | 24.75d |
| 162 | 1.2.4.4 | **Estructurar subsistemas de diseño** | 1d | 2013-04-03 | 2013-04-03 | 24.75d |
| 163 | 1.2.4.4.1 | Identificar subsistemas | 1d | 2013-04-03 | 2013-04-03 | 24.75d |
| 164 | 1.2.4.4.2 | Identificar interfaces entre subsistemas | 1d | 2013-04-03 | 2013-04-03 | 24.75d |
| 165 | 1.2.4.4.3 | Establecer relaciones entre subsistemas | 1d | 2013-04-03 | 2013-04-03 | 24.75d |
| 166 | 1.2.4.4.4 | Realizar modelo de diseño | 1d | 2013-04-03 | 2013-04-03 | 24.75d |
| 167 | 1.2.4.5 | **Mapeo del Modelo de Objetos a BDR** | 1d | 2013-04-03 | 2013-04-03 | 24.75d |
| 168 | 1.2.4.5.1 | Configurar la herramienta ORM para generar el mapeo automaticamente. | 1d | 2013-04-03 | 2013-04-03 | 24.75d |
| 169 | 1.2.4.5.2 | Codificar las clases utilizando las herramientas brindas por hibernate. | 1d | 2013-04-03 | 2013-04-03 | 24.75d |
| 170 | 1.2.4.5.3 | Realizar la compilación del proyecto para generar la estructura de la BD a través de la herramienta | 1d | 2013-04-03 | 2013-04-03 | 24.75d |
| 171 | 1.2.4.5.4 | Generar DER | 1d | 2013-04-03 | 2013-04-03 | 24.75d |
| 172 | 1.2.5 | **Implementación** | 1d | 2013-04-03 | 2013-04-03 | 24.75d |
| 173 | 1.2.5.1 | **Implementar la arquitectura** | 1d | 2013-04-03 | 2013-04-03 | 24.75d |
| 174 | 1.2.5.1.1 | Identificar componentes relevantes para la arquitectura | 1d | 2013-04-03 | 2013-04-03 | 24.75d |
| 175 | 1.2.5.1.2 | Asignar componentes a nodos | 1d | 2013-04-03 | 2013-04-03 | 24.75d |
| 176 | 1.2.5.2 | **Integrar sistema** | 1d | 2013-04-03 | 2013-04-03 | 24.75d |
| 177 | 1.2.5.2.1 | Definir construcciones a integrar | 1d | 2013-04-03 | 2013-04-03 | 24.75d |
| 178 | 1.2.5.2.2 | Comprobar compatibilidad de construcciones | 1d | 2013-04-03 | 2013-04-03 | 24.75d |
| 179 | 1.2.5.2.3 | Crear plan de integración de construcción | 1d | 2013-04-03 | 2013-04-03 | 24.75d |
| 180 | 1.2.5.2.4 | Integrar construcciones de sistema | 1d | 2013-04-03 | 2013-04-03 | 24.75d |

| ID | WBS | Task | Duration | Start | Finish | Total slack |
| --- | --- | --- | --- | --- | --- | --- |
| 181 | 1.2.5.3 | **Implementar subsistema** | 1d | 2013-04-03 | 2013-04-03 | 24.75d |
| 182 | 1.2.5.3.1 | Definir objetivos y alcances del subsistema | 1d | 2013-04-03 | 2013-04-03 | 24.75d |
| 183 | 1.2.5.3.2 | Implementar subsistema en la construcción actual | 1d | 2013-04-03 | 2013-04-03 | 24.75d |
| 184 | 1.2.5.3.3 | Mantener los contenidos del subsistema | 1d | 2013-04-03 | 2013-04-03 | 24.75d |
| 185 | 1.2.5.4 | **Implementar clase** | 1d | 2013-04-03 | 2013-04-03 | 24.75d |
| 186 | 1.2.5.4.1 | Identificar clases de diseño a implementar | 1d | 2013-04-03 | 2013-04-03 | 24.75d |
| 187 | 1.2.5.4.2 | Generar código a partir de las clases de diseño | 1d | 2013-04-03 | 2013-04-03 | 24.75d |
| 188 | 1.2.5.4.3 | Implementar operaciones correspondientes en cada clase | 1d | 2013-04-03 | 2013-04-03 | 24.75d |
| 189 | 1.2.5.4.4 | Comprobar que las clases implementan las interfaces correspondientes | 1d | 2013-04-03 | 2013-04-03 | 24.75d |
| 190 | 1.2.5.5 | **Realizar pruebas de unidad** | 1d | 2013-04-03 | 2013-04-03 | 24.75d |
| 191 | 1.2.5.5.1 | Realizar plan de pruebas de unidad | 1d | 2013-04-03 | 2013-04-03 | 24.75d |
| 192 | 1.2.5.5.2 | Diseñar pruebas de caja negra, caja blanca y basadas en estados según corresponda | 1d | 2013-04-03 | 2013-04-03 | 24.75d |
| 193 | 1.2.5.5.3 | Realizar pruebas de unidad | 1d | 2013-04-03 | 2013-04-03 | 24.75d |
| 194 | 1.2.5.5.4 | Documentar resultados | 1d | 2013-04-03 | 2013-04-03 | 24.75d |
| 195 | 1.2.6 | **Prueba** | 1d | 2013-04-03 | 2013-04-03 | 24.75d |
| 196 | 1.2.6.1 | **Planificar pruebas** | 1d | 2013-04-03 | 2013-04-03 | 24.75d |
| 197 | 1.2.6.1.1 | Describir estrategia de prueba | 1d | 2013-04-03 | 2013-04-03 | 24.75d |
| 198 | 1.2.6.1.2 | Estimar los recursos para la prueba | 1d | 2013-04-03 | 2013-04-03 | 24.75d |
| 199 | 1.2.6.1.3 | Planificar el esfuerzo de la prueba | 1d | 2013-04-03 | 2013-04-03 | 24.75d |
| 200 | 1.2.6.2 | **Diseñar pruebas** | 1d | 2013-04-03 | 2013-04-03 | 24.75d |
| 201 | 1.2.6.2.1 | Identificar casos de prueba | 1d | 2013-04-03 | 2013-04-03 | 24.75d |
| 202 | 1.2.6.2.2 | Describir casos de prueba | 1d | 2013-04-03 | 2013-04-03 | 24.75d |
| 203 | 1.2.6.2.3 | Estructurar procedimiento de prueba | 1d | 2013-04-03 | 2013-04-03 | 24.75d |
| 204 | 1.2.6.3 | **Automatizar pruebas** | 1d | 2013-04-03 | 2013-04-03 | 24.75d |
| 205 | 1.2.6.3.1 | Identificar procedimientos de prueba automatizables | 1d | 2013-04-03 | 2013-04-03 | 24.75d |
| 206 | 1.2.6.3.2 | Crear componente de prueba | 1d | 2013-04-03 | 2013-04-03 | 24.75d |

| ID | WBS | Task | Duration | Start | Finish | Total slack |
| --- | --- | --- | --- | --- | --- | --- |
| 207 | 1.2.6.4 | **Realizar pruebas** | 1d | 2013-04-03 | 2013-04-03 | 24.75d |
| 208 | 1.2.6.4.1 | Realizar pruebas de integración | 1d | 2013-04-03 | 2013-04-03 | 24.75d |
| 209 | 1.2.6.4.2 | Realizar pruebas de sistema | 1d | 2013-04-03 | 2013-04-03 | 24.75d |
| 210 | 1.2.6.4.3 | Registrar resultados de pruebas | 1d | 2013-04-03 | 2013-04-03 | 24.75d |
| 211 | 1.2.6.5 | **Evaluar pruebas** | 1d | 2013-04-03 | 2013-04-03 | 24.75d |
| 212 | 1.2.6.5.1 | Evaluar esfuerzos de prueba | 1d | 2013-04-03 | 2013-04-03 | 24.75d |
| 213 | 1.2.6.5.2 | Comparar resultados con los objetivos establecidos en el plan de pruebas | 1d | 2013-04-03 | 2013-04-03 | 24.75d |
| 214 | 1.2.6.5.3 | Establecer métricas y fiabilidad del sistema | 1d | 2013-04-03 | 2013-04-03 | 24.75d |
| 215 | 1.2.7 | **Distribución del SW** | 1d | 2013-04-03 | 2013-04-03 | 24.75d |
| 216 | 1.2.7.1 | **Planificar la distribución** | 1d | 2013-04-03 | 2013-04-03 | 24.75d |
| 217 | 1.2.7.1.1 | Definir fecha de instalación del sistema | 1d | 2013-04-03 | 2013-04-03 | 24.75d |
| 218 | 1.2.7.1.2 | Definir lugar y fecha de capacitaciones | 1d | 2013-04-03 | 2013-04-03 | 24.75d |
| 219 | 1.2.7.1.3 | Definir recursos asignados a la distribución | 1d | 2013-04-03 | 2013-04-03 | 24.75d |
| 220 | 1.2.7.2 | **Producir unidad de distribución** | 1d | 2013-04-03 | 2013-04-03 | 24.75d |
| 221 | 1.2.7.2.1 | Definir forma de entrega del SW | 1d | 2013-04-03 | 2013-04-03 | 24.75d |
| 222 | 1.2.7.2.2 | Identificar los artefactos necesarios para instalar y usar el sistema | 1d | 2013-04-03 | 2013-04-03 | 24.75d |
| 223 | 1.2.7.2.3 | Empaquetar el producto | 1d | 2013-04-03 | 2013-04-03 | 24.75d |
| 224 | 1.2.7.3 | **Efectuar capacitaciones** | 1d | 2013-04-03 | 2013-04-03 | 24.75d |
| 225 | 1.2.7.3.1 | Confeccionar Material de Soporte | 1d | 2013-04-03 | 2013-04-03 | 24.75d |
| 226 | 1.2.7.3.2 | Organizar capacitaciones | 1d | 2013-04-03 | 2013-04-03 | 24.75d |
| 227 | 1.2.7.3.3 | Realizar las capacitaciones correspondientes | 1d | 2013-04-03 | 2013-04-03 | 24.75d |
| 228 | 1.2.7.3.4 | Evaluar la capacitacion | 1d | 2013-04-03 | 2013-04-03 | 24.75d |
| 229 | 1.2.8 | **Nivel de Esfuerzo** | 1d | 2013-04-03 | 2013-04-03 | 24.75d |
| 230 | 1.2.8.1 | **Organización de reuniones** | 1d | 2013-04-03 | 2013-04-03 | 24.75d |
| 231 | 1.2.8.1.1 | Establecer lugar, fecha y hora de reunión | 1d | 2013-04-03 | 2013-04-03 | 24.75d |
| 232 | 1.2.8.1.2 | Asistir a la reunión | 1d | 2013-04-03 | 2013-04-03 | 24.75d |
| 233 | 1.2.8.1.3 | Documentar temas tratados | 1d | 2013-04-03 | 2013-04-03 | 24.75d |

| ID | WBS | Task | Duration | Start | Finish | Total slack |
| --- | --- | --- | --- | --- | --- | --- |
| 234 | 1.2.8.2 | **Presentaciones** | 1d | 2013-04-03 | 2013-04-03 | 24.75d |
| 235 | 1.2.8.2.1 | Definir temas a presentar | 1d | 2013-04-03 | 2013-04-03 | 24.75d |
| 236 | 1.2.8.2.2 | Estructurar presentación | 1d | 2013-04-03 | 2013-04-03 | 24.75d |
| 237 | 1.2.8.2.3 | Llevar a cabo la presentación | 1d | 2013-04-03 | 2013-04-03 | 24.75d |
| 238 | 1.2.8.3 | **Investigaciones** | 1d | 2013-04-03 | 2013-04-03 | 24.75d |
| 239 | 1.2.8.3.1 | Definir temas a investigar | 1d | 2013-04-03 | 2013-04-03 | 24.75d |
| 240 | 1.2.8.3.2 | Buscar material relevante | 1d | 2013-04-03 | 2013-04-03 | 24.75d |
| 241 | 1.2.8.3.3 | Asimilar los conocimientos (teórica y prácticamente) | 1d | 2013-04-03 | 2013-04-03 | 24.75d |
